| id | title | hours | confidence | start_date | end_date | critical_path | blocked_by | parallel_with | optional | stretch |
| --- | --- | --- | --- | --- | --- | --- | --- | --- | --- | --- |
| T1 | Emitter interface, sentinels, EmitError, NoopEmitter, MockEmitter, Config loader | 7 | High | 2026-04-20 | 2026-04-21 | True |  |  |  |  |
| T2 | franz-go Producer happy path (publishDirect, Close, Healthy, classifier, CloudEvents headers) | 8 | Medium | 2026-04-22 | 2026-04-23 | True | T1 |  |  |  |
| T3 | Circuit breaker integration + state listener + outbox-fallback flag plumbing | 5 | Medium | 2026-04-24 | 2026-04-27 | True | T2 |  |  |  |
| T4 | Outbox integration (circuit-open fallback + Dispatcher handler bridge) | 6 | Medium | 2026-04-27 | 2026-04-28 | True | T3 |  |  |  |
| T5 | Per-topic DLQ publisher + retry-exhaustion path + classifier DLQ routing | 5 | Medium | 2026-04-28 | 2026-04-28 | True | T4 |  |  |  |
| T6 | OTEL metrics (6 instruments, lazy-init, nil-guarded) + streaming.emit span + log fields | 6 | Medium | 2026-04-28 | 2026-04-29 | True | T2 |  |  |  |
| T7 | commons.App integration, paired X/XContext, nil guards, Close flush deadline | 4 | High | 2026-04-29 | 2026-04-30 | True | T6 |  |  |  |
| T8 | WithTLSConfig + WithSASL options (minimal v1 plumbing to kgo) | 2 | High | 2026-04-24 | 2026-04-24 |  | T2 |  |  |  |
| T9 | Integration tests (testcontainers Redpanda round-trip, DLQ, outbox fallback, CloudEvents contract) | 12 | Low | 2026-04-30 | 2026-05-01 | True | T1, T2, T3, T4, T5, T6, T7, T8 |  |  |  |
| T10 | doc.go, .env.reference, CLAUDE.md streaming section, README one-liner | 5 | High | 2026-05-01 | 2026-05-01 | True | T1, T2, T3, T4, T5, T6, T7, T8 | T9 |  |  |
| T11 | Grafana dashboard JSON (stretch) | 3 | Low | 2026-05-05 | 2026-05-05 |  | T6 |  | True | True |
